How a schedule from an exported table changed from version to version. A marks actual dates.

## Version 1 (saved 2014-11-23)

Note of the change: Initial Structure

| Task | Start | Finish |
| --- | --- | --- |
| Analysis and Documentation | 11/24/14 | 12/3/14 |
| Business/Functional requirment analysis and document | 11/24/14 | 11/25/14 |
| Technical Design Document | 11/26/14 | 12/2/14 |
| Design Discussion with team | 12/3/14 | 12/3/14 |
| General | 12/4/14 | 12/9/14 |
| Setup | 12/4/14 | 12/4/14 |
| wireframe-design | 12/5/14 | 12/5/14 |
| Database design | 12/8/14 | 12/9/14 |
| FrontStore | 11/24/14 | 12/25/14 |
| User Account Management | 11/24/14 | 12/25/14 |
| API development | 12/10/14 | 12/24/14 |
| Visitor Features | 11/24/14 | 12/24/14 |
| View Home Banners or Slide Show Gallery | 12/12/14 | 12/15/14 |
| Browse Products | 12/15/14 | 12/16/14 |
| View Product Details | 12/19/14 | 12/22/14 |
| View FAQs | 12/22/14 | 12/23/14 |
| Become a Member through Registration process | 12/23/14 | 12/24/14 |
| View Static Pages | 11/24/14 | 11/24/14 |
| Registered Member Panel | 12/11/14 | 12/25/14 |
| Login to site | 12/11/14 | 12/12/14 |
| Manage Account | 12/15/14 | 12/16/14 |
| My Profile | 12/17/14 | 12/18/14 |
| My Orders | 12/19/14 | 12/22/14 |
| Buy Product (Checkout) | 12/23/14 | 12/24/14 |
| Logout | 12/24/14 | 12/25/14 |
| UI Development | 12/12/14 | 1/28/15 |
| Admin Panel | 12/10/14 | 1/28/15 |
| API Development | 12/10/14 | 1/26/15 |
| Store Management | 12/12/14 | 1/28/15 |
| Login | 12/12/14 | 12/15/14 |
| Dashboard | 12/19/14 | 12/22/14 |
| Administrator User Management | 12/23/14 | 12/24/14 |
| Site Member(Customer) Management | 12/26/14 | 12/29/14 |
| Product Management | 1/2/15 | 1/5/15 |
| Price Chart Management | 1/9/15 | 1/12/15 |
| Banner Manager | 1/13/15 | 1/14/15 |
| Order Manager | 1/20/15 | 1/21/15 |
| Shipping Management | 1/27/15 | 1/28/15 |

## Version 2 (saved 2014-11-23)

Note of the change: inclined in the excel version of project plan

Changed:

| Task | Start | Finish |
| --- | --- | --- |
| Analysis and Documentation | 11/24/14 → 11/24/2014 | 12/3/14 → 12/3/2014 |
| Business/Functional requirment analysis and document | 11/24/14 → 11/24/2014 | 11/25/14 → 11/25/2014 |
| Technical Design Document | 11/26/14 → 11/26/2014 | 12/2/14 → 12/2/2014 |
| Design Discussion with team | 12/3/14 → 12/3/2014 | 12/3/14 → 12/3/2014 |
| General | 12/4/14 → 12/4/2014 | 12/9/14 → 12/9/2014 |
| Setup | 12/4/14 → 12/4/2014 | 12/4/14 → 12/4/2014 |
| wireframe-design | 12/5/14 → 12/5/2014 | 12/5/14 → 12/5/2014 |
| Database design | 12/8/14 → 12/8/2014 | 12/9/14 → 12/9/2014 |
| FrontStore | 11/24/14 → 11/24/2014 | 12/25/14 → 12/25/2014 |
| User Account Management | 11/24/14 → 11/24/2014 | 12/25/14 → 12/25/2014 |
| API development | 12/10/14 → 12/10/2014 | 12/24/14 → 12/24/2014 |
| Visitor Features | 11/24/14 → 11/24/2014 | 12/24/14 → 12/24/2014 |
| View Home Banners or Slide Show Gallery | 12/12/14 → 12/12/2014 | 12/15/14 → 12/15/2014 |
| Browse Products | 12/15/14 → 12/15/2014 | 12/16/14 → 12/16/2014 |
| View Product Details | 12/19/14 → 12/19/2014 | 12/22/14 → 12/22/2014 |
| View FAQs | 12/22/14 → 12/22/2014 | 12/23/14 → 12/23/2014 |
| Become a Member through Registration process | 12/23/14 → 12/23/2014 | 12/24/14 → 12/24/2014 |
| View Static Pages | 11/24/14 → 11/24/2014 | 11/24/14 → 11/24/2014 |
| Registered Member Panel | 12/11/14 → 12/11/2014 | 12/25/14 → 12/25/2014 |
| Login to site | 12/11/14 → 12/11/2014 | 12/12/14 → 12/12/2014 |
| Manage Account | 12/15/14 → 12/15/2014 | 12/16/14 → 12/16/2014 |
| My Profile | 12/17/14 → 12/17/2014 | 12/18/14 → 12/18/2014 |
| My Orders | 12/19/14 → 12/19/2014 | 12/22/14 → 12/22/2014 |
| Buy Product (Checkout) | 12/23/14 → 12/23/2014 | 12/24/14 → 12/24/2014 |
| Logout | 12/24/14 → 12/24/2014 | 12/25/14 → 12/25/2014 |
| UI Development | 12/12/14 → 12/12/2014 | 1/28/15 → 1/28/2015 |
| Admin Panel | 12/10/14 → 12/10/2014 | 1/28/15 → 1/28/2015 |
| API Development | 12/10/14 → 12/10/2014 | 1/26/15 → 1/26/2015 |
| Store Management | 12/12/14 → 12/12/2014 | 1/28/15 → 1/28/2015 |
| Login | 12/12/14 → 12/12/2014 | 12/15/14 → 12/15/2014 |
| Dashboard | 12/19/14 → 12/19/2014 | 12/22/14 → 12/22/2014 |
| Administrator User Management | 12/23/14 → 12/23/2014 | 12/24/14 → 12/24/2014 |
| Site Member(Customer) Management | 12/26/14 → 12/26/2014 | 12/29/14 → 12/29/2014 |
| Product Management | 1/2/15 → 1/2/2015 | 1/5/15 → 1/5/2015 |
| Price Chart Management | 1/9/15 → 1/9/2015 | 1/12/15 → 1/12/2015 |
| Banner Manager | 1/13/15 → 1/13/2015 | 1/14/15 → 1/14/2015 |
| Order Manager | 1/20/15 → 1/20/2015 | 1/21/15 → 1/21/2015 |
| Shipping Management | 1/27/15 → 1/27/2015 | 1/28/15 → 1/28/2015 |
